# SAGES GANTT

Schedule from MS Project, 2019-03-19 to 2019-07-09, 4 hours a day, costs in $, A marks actual dates.

## Calendars

- SAGES: Mon-Fri 19:30-23:30; Sat-Sun off. Exceptions (off unless hours are given): 2019-04-19 (Viernes Santo), 2019-05-01 (Día nacional de trabajo), 2019-05-20 to 2019-05-21 (Día de las glorias navales).

## Resources

| Resource | Rate |
| --- | --- |
| Victoria Fernandez Rojas | 8000 |
| Juan Pablo Marín Valbuena | 8000 |
| Laura Péndola Gambetta | 8000 |
| l |  |

## Schedule

| ID | WBS | Task | Type | Duration | Start | Finish | Predecessors | Complete | Remaining | Actual start | Actual finish | Constraint | Resources | Work | Actual work | Cost | Actual cost |
| --- | --- | --- | --- | --- | --- | --- | --- | --- | --- | --- | --- | --- | --- | --- | --- | --- | --- |
| 1 | 1 | **1.1 Acta de constitución del proyecto** |  | 20.38d | 2019-03-19 09:00 A | 2019-04-09 11:00 |  | 14% | 17.6d |  |  |  |  | 651.5h | 81.5h | 5,212,000 | 652,000 |
| 2 | 1.1 | **1.1.1 Análisis del Entorno** |  | 4d | 2019-03-19 19:30 | 2019-03-22 23:30 |  | 100% |  | 2019-03-19 09:00 | 2019-03-22 19:00 |  |  | 22h | 22h | 176,000 | 176,000 |
| 3 | 1.1.1 | 1.1.1.1 Identificar necesidades | manual | 1h | 2019-03-19 09:00 A | 2019-03-19 10:00 A |  | 100% |  |  |  |  | Juan Pablo Marín Valbuena; Laura Péndola Gambetta; Victoria Fernandez Rojas | 3h | 3h | 24,000 | 24,000 |
| 4 | 1.1.2 | 1.1.1.2 Primera reunión con cliente (Recopilación de antecedentes) | manual | 0.5h | 2019-03-20 09:00 A | 2019-03-20 09:30 A | 3 | 100% |  |  |  | start no earlier than 2019-03-20 09:00 | Juan Pablo Marín Valbuena; Laura Péndola Gambetta | 1h | 1h | 8,000 | 8,000 |
| 5 | 1.1.3 | 1.1.1.3 Descripción del entorno | manual | 6h | 2019-03-22 11:00 A | 2019-03-22 19:00 A |  | 100% |  |  |  | finish no earlier than 2019-03-22 23:30 | Juan Pablo Marín Valbuena; Laura Péndola Gambetta; Victoria Fernandez Rojas | 18h | 18h | 144,000 | 144,000 |
| 6 | 1.2 | **1.1.2 Análisis del problema** |  | 3d | 2019-03-25 19:30 A | 2019-03-27 23:30 |  | 100% |  |  | 2019-03-27 21:30 |  |  | 18h | 18h | 144,000 | 144,000 |
| 7 | 1.2.1 | 1.1.2.1 Evaluación de falencias del sistema actual |  | 2h | 2019-03-25 19:30 A | 2019-03-25 21:30 A | 5 | 100% |  |  |  |  | Juan Pablo Marín Valbuena; Laura Péndola Gambetta; Victoria Fernandez Rojas | 6h | 6h | 48,000 | 48,000 |
| 8 | 1.2.2 | 1.1.2.2 Investigar acerca del rubro |  | 2h | 2019-03-26 19:30 A | 2019-03-26 21:30 A | 5 | 100% |  |  |  | start no earlier than 2019-03-26 09:00 | Juan Pablo Marín Valbuena; Laura Péndola Gambetta; Victoria Fernandez Rojas | 6h | 6h | 48,000 | 48,000 |
| 9 | 1.2.3 | 1.1.2.3 Identificar interesados/afectados |  | 2h | 2019-03-27 19:30 A | 2019-03-27 21:30 A | 5 | 100% |  |  |  | start no earlier than 2019-03-27 09:00 | Juan Pablo Marín Valbuena; Laura Péndola Gambetta; Victoria Fernandez Rojas | 6h | 6h | 48,000 | 48,000 |
| 10 | 1.3 | **1.1.3 Toma de requerimientos** |  | 2d | 2019-04-01 19:30 A | 2019-04-02 23:30 |  | 100% |  |  | 2019-04-02 22:30 |  |  | 10h | 10h | 80,000 | 80,000 |
| 11 | 1.3.1 | 1.1.3.1 Segunda reunión con cliente |  | 1h | 2019-04-01 19:30 A | 2019-04-01 20:30 A |  | 100% |  |  |  |  | Juan Pablo Marín Valbuena | 1h | 1h | 8,000 | 8,000 |
| 12 | 1.3.2 | 1.1.3.2 Definición de requerimientos a desarrollar |  | 3h | 2019-04-02 19:30 A | 2019-04-02 22:30 A | 11 | 100% |  |  |  | start no earlier than 2019-04-02 09:00 | Juan Pablo Marín Valbuena; Laura Péndola Gambetta; Victoria Fernandez Rojas | 9h | 9h | 72,000 | 72,000 |
| 13 | 1.4 | **1.1.4 Análisis de riesgos** |  | 2d | 2019-04-03 19:30 A | 2019-04-04 23:30 A |  | 100% |  |  |  |  |  | 18h | 18h | 144,000 | 144,000 |
| 14 | 1.4.1 | 1.1.4.1 Identificación de riesgos de cada requerimiento |  | 3h | 2019-04-03 19:30 A | 2019-04-03 22:30 A | 12 | 100% |  |  |  |  | Juan Pablo Marín Valbuena; Laura Péndola Gambetta; Victoria Fernandez Rojas | 9h | 9h | 72,000 | 72,000 |
| 15 | 1.4.2 | 1.1.4.2 Defininir planes de contingencia y mitigación |  | 1.5h | 2019-04-04 22:00 A | 2019-04-04 23:30 A | 14 | 100% |  |  |  | finish no earlier than 2019-04-04 23:30 | Juan Pablo Marín Valbuena; Laura Péndola Gambetta; Victoria Fernandez Rojas | 4.5h | 4.5h | 36,000 | 36,000 |
| 16 | 1.4.3 | 1.1.4.3 Identificar responsables y roles de cada proceso |  | 1.5h | 2019-04-04 19:30 A | 2019-04-04 21:00 A |  | 100% |  |  |  | start no earlier than 2019-04-04 09:00 | Juan Pablo Marín Valbuena; Laura Péndola Gambetta; Victoria Fernandez Rojas | 4.5h | 4.5h | 36,000 | 36,000 |
| 17 | 1.5 | **1.1.5 Análisis de Factibilidades** |  | 2d | 2019-04-05 19:30 | 2019-04-08 23:30 |  | 3% | 1.93d | 2019-04-05 12:00 |  |  |  | 583.5h | 13.5h | 4,668,000 | 108,000 |
| 18 | 1.5.1 | 1.1.5.1 Desarrollo de factibilidad técnica |  | 1.5h | 2019-04-05 19:30 A | 2019-04-05 21:00 A |  | 100% |  |  |  |  | Juan Pablo Marín Valbuena; Laura Péndola Gambetta; Victoria Fernandez Rojas | 4.5h | 4.5h | 36,000 | 36,000 |
| 19 | 1.5.2 | 1.1.5.2 Desarrollo de factibilidad económica | manual | 1.5h | 2019-04-05 19:30 A | 2019-04-05 21:00 A | 18 | 100% |  |  |  |  | Juan Pablo Marín Valbuena; Laura Péndola Gambetta; Victoria Fernandez Rojas | 4.5h | 4.5h | 36,000 | 36,000 |
| 20 | 1.5.3 | 1.1.5.3 Desarrollo de factibilidad implementativa | manual | 190h | 2019-04-05 12:00 | 2019-06-18 15:30 | 19 |  |  |  |  |  | Juan Pablo Marín Valbuena; Laura Péndola Gambetta; Victoria Fernandez Rojas | 570h |  | 4,560,000 |  |
| 21 | 1.5.4 | 1.1.5.4 Desarrollo de factibilidad legal |  | 1.5h | 2019-04-08 19:30 A | 2019-04-08 21:00 A | 18, 20 | 100% |  |  |  | start no earlier than 2019-04-08 09:00 | Juan Pablo Marín Valbuena; Laura Péndola Gambetta; Victoria Fernandez Rojas | 4.5h | 4.5h | 36,000 | 36,000 |
| 22 | 1.5.5 | 1.1.5.5 Entrega Acta de Constitución |  | 2h | 2019-04-09 19:30 A | 2019-04-09 21:30 A |  | 100% |  |  |  | start no earlier than 2019-04-09 09:00 |  |  |  |  |  |
| 23 | 2 | **1.2 Planificación de proyecto** |  | 12d | 2019-04-17 19:30 | 2019-05-06 23:30 |  | 54% | 5.55d | 2019-04-17 09:00 |  |  |  | 76.5h | 30h | 612,000 | 240,000 |
| 24 | 2.1 | **1.2.1 Desarrollo EDT** |  | 5d | 2019-04-17 19:30 | 2019-04-24 23:30 |  | 16% | 4.19d | 2019-04-17 09:00 |  |  |  | 55.5h | 9h | 444,000 | 72,000 |
| 25 | 2.1.1 | 1.2.1.1 Jerarquización paquetes de trabajo | manual | 9h | 2019-04-17 09:00 | 2019-04-18 10:00 |  |  |  |  |  | start no earlier than 2019-04-17 09:00 | Juan Pablo Marín Valbuena; Laura Péndola Gambetta; Victoria Fernandez Rojas | 27h |  | 216,000 |  |
| 26 | 2.1.2 | 1.2.1.2 Creación de Diccionario EDT | manual | 6.5h | 2019-04-18 10:00 | 2019-04-18 18:30 | 25 |  |  |  |  | start no earlier than 2019-04-22 09:00 | Juan Pablo Marín Valbuena; Laura Péndola Gambetta; Victoria Fernandez Rojas | 19.5h |  | 156,000 |  |
| 27 | 2.1.3 | 1.2.1.3 Definición de entregables | manual | 3h | 2019-04-24 16:00 A | 2019-04-24 19:00 A | 26 | 100% |  |  |  | finish no earlier than 2019-04-24 23:30 | Juan Pablo Marín Valbuena; Laura Péndola Gambetta; Victoria Fernandez Rojas | 9h | 9h | 72,000 | 72,000 |

| ID | WBS | Task | Type | Duration | Start | Finish | Predecessors | Complete | Remaining | Actual start | Actual finish | Constraint | Resources | Work | Actual work | Cost | Actual cost |
| --- | --- | --- | --- | --- | --- | --- | --- | --- | --- | --- | --- | --- | --- | --- | --- | --- | --- |
| 28 | 2.2 | **1.2.2 Carta Gantt** |  | 2d | 2019-04-25 19:30 | 2019-04-26 23:30 |  | 100% |  | 2019-04-25 09:00 | 2019-04-26 12:00 |  |  | 12h | 12h | 96,000 | 96,000 |
| 29 | 2.2.1 | 1.2.2.1 Identificación de tareas | manual | 3h | 2019-04-25 09:00 A | 2019-04-25 12:00 A | 25 | 100% |  |  |  |  | Juan Pablo Marín Valbuena; Laura Péndola Gambetta; Victoria Fernandez Rojas | 9h | 9h | 72,000 | 72,000 |
| 30 | 2.2.2 | 1.2.2.2 Migración a Microsoft Project | manual | 3h | 2019-04-26 09:00 A | 2019-04-26 12:00 A | 29 | 100% |  |  |  | start no earlier than 2019-04-26 09:00 | Juan Pablo Marín Valbuena | 3h | 3h | 24,000 | 24,000 |
| 31 | 2.3 | **1.2.3 Planes de dirección** |  | 5d | 2019-04-29 19:30 | 2019-05-06 23:30 |  | 100% |  | 2019-04-29 09:00 | 2019-05-06 12:00 |  |  | 9h | 9h | 72,000 | 72,000 |
| 32 | 2.3.1 | 1.2.3.1 Generación de plan de gestión de costos | manual | 3h | 2019-04-29 09:00 A | 2019-04-29 12:00 A |  | 100% |  |  |  |  | Laura Péndola Gambetta | 3h | 3h | 24,000 | 24,000 |
| 33 | 2.3.2 | 1.2.3.2 Generación de plan de gestión de calidad | manual | 3h | 2019-05-02 09:00 A | 2019-05-02 12:00 A |  | 100% |  |  |  |  | Victoria Fernandez Rojas | 3h | 3h | 24,000 | 24,000 |
| 34 | 2.3.3 | 1.2.3.3 Generación de plan de gestión de comunicación | manual | 3h | 2019-05-06 09:00 A | 2019-05-06 12:00 A |  | 100% |  |  |  |  | Juan Pablo Marín Valbuena | 3h | 3h | 24,000 | 24,000 |
| 35 | 3 | **2.1 Diseño Infraestructura** |  | 3.38d | 2019-03-19 09:00 | 2019-03-19 22:30 |  | 21% | 2.65d | 2019-05-08 09:00 |  |  |  | 17h | 6h | 136,000 | 48,000 |
| 36 | 3.1 | **2.1.1 Diseño servidor App** |  | 2d | 2019-05-08 19:30 | 2019-05-09 23:30 |  | 21% | 1.57d | 2019-05-08 09:00 |  |  |  | 17h | 6h | 136,000 | 48,000 |
| 37 | 3.1.1 | 2.1.1.1 Definición de tipo de servidor | manual | 3h | 2019-05-08 09:00 A | 2019-05-08 12:00 A |  | 100% |  |  |  |  | Juan Pablo Marín Valbuena; Laura Péndola Gambetta | 6h | 6h | 48,000 | 48,000 |
| 38 | 3.1.2 | 2.1.1.2 Diseño plan de pruebas de servidor | manual | 11h | 2019-06-20 19:30 | 2019-06-24 22:30 |  |  |  |  |  |  | Victoria Fernandez Rojas | 11h |  | 88,000 |  |
| 39 | 4 | **2.2 Diseño Software** |  | 11d | 2019-05-20 19:30 | 2019-06-04 23:30 |  | 30% | 7.75d | 2019-05-20 09:00 |  |  |  | 238h | 93.08h | 1,880,000 | 744,600 |
| 40 | 4.1 | **2.2.1 Diseño de interfaz** |  | 4d | 2019-05-20 19:30 | 2019-05-24 23:30 |  | 36% | 2.55d | 2019-05-20 09:00 |  |  |  | 13h | 11h | 88,000 | 88,000 |
| 41 | 4.1.1 | 2.2.1.1 Diseño login | manual | 0.25d | 2019-05-20 09:00 A | 2019-05-20 10:00 A |  | 100% |  |  |  |  | Laura Péndola Gambetta | 1h | 1h | 8,000 | 8,000 |
| 42 | 4.1.2 | 2.2.1.2 Diseño de cuenta de administrativo | manual | 0.25d | 2019-05-20 09:00 A | 2019-05-20 10:00 A |  | 100% |  |  |  |  | Laura Péndola Gambetta | 1h | 1h | 8,000 | 8,000 |
| 43 | 4.1.3 | 2.2.1.3 Diseño de cuenta de docente | manual | 0.25d | 2019-05-20 09:00 A | 2019-05-20 10:00 A | 42 | 100% |  |  |  |  | Juan Pablo Marín Valbuena | 1h | 1h | 8,000 | 8,000 |
| 44 | 4.1.4 | 2.2.1.4 Diseño cambio contraseña | manual | 0.25d | 2019-05-20 09:00 A | 2019-05-20 10:00 A |  | 100% |  |  |  |  | Laura Péndola Gambetta | 1h | 1h | 8,000 | 8,000 |
| 45 | 4.1.5 | 2.2.1.5 Correciones según revisión | manual | 13d | 2019-05-23 19:30 A | 2019-06-10 23:30 |  | 80% | 2.6d |  |  |  |  |  |  |  |  |
| 46 | 4.1.6 | 2.2.1.6 Diseño de calendario | manual | 0.25d | 2019-05-24 09:00 A | 2019-05-24 10:00 A | 43 | 100% |  |  |  |  | Victoria Fernandez Rojas | 1h | 1h | 8,000 | 8,000 |
| 47 | 4.1.7 | 2.2.1.7 Diseño de mantenedor de insumos | manual | 0.25d | 2019-05-24 09:00 A | 2019-05-24 10:00 A | 46 | 100% |  |  |  |  | Victoria Fernandez Rojas | 1h | 1h | 8,000 | 8,000 |
| 48 | 4.1.8 | 2.2.1.8 Diseño de mantenedor de usuarios | manual | 0.25d | 2019-05-24 09:00 A | 2019-05-24 10:00 A | 47 | 100% |  |  |  |  | Laura Péndola Gambetta | 1h | 1h | 8,000 | 8,000 |
| 49 | 4.1.9 | 2.2.1.9 Diseño de mantenedor de salas | manual | 12.88d | 2019-05-28 09:00 | 2019-06-11 20:30 |  |  |  |  |  |  |  | 1h |  |  |  |
| 50 | 4.1.10 | 2.2.1.10 Diseño de solicitud de reservas | manual | 0.25d | 2019-05-24 09:00 A | 2019-05-24 10:00 A |  | 100% |  |  |  |  | Victoria Fernandez Rojas | 1h | 1h | 8,000 | 8,000 |
| 51 | 4.1.11 | 2.2.1.11 Diseño de generación de reportes | manual | 0.25d | 2019-05-24 09:00 A | 2019-05-24 10:00 A | 50 | 100% |  |  |  |  | Juan Pablo Marín Valbuena | 1h | 1h | 8,000 | 8,000 |
| 52 | 4.1.12 | 2.2.1.12 Diseño cambio de contraseña | manual | 0.25d | 2019-05-24 09:00 A | 2019-05-24 20:30 A |  | 100% |  |  |  |  | Laura Péndola Gambetta | 1h | 1h | 8,000 | 8,000 |
| 53 | 4.1.13 | 2.2.1.13 Diseño de selección de perfil | manual | 0.25d | 2019-05-24 09:00 A | 2019-05-24 20:30 A |  | 100% |  |  |  |  | Laura Péndola Gambetta | 1h | 1h | 8,000 | 8,000 |
| 54 | 4.1.14 | 2.1.1.14 Diseño de mantenedor de maquinarias | manual | 12.88d | 2019-05-28 09:00 | 2019-06-11 20:30 |  |  |  |  |  |  |  | 1h |  |  |  |

| ID | WBS | Task | Type | Duration | Start | Finish | Predecessors | Complete | Remaining | Actual start | Resources | Work | Actual work | Cost | Actual cost |
| --- | --- | --- | --- | --- | --- | --- | --- | --- | --- | --- | --- | --- | --- | --- | --- |
| 55 | 4.2 | **2.2.2 Perfilamiento** |  | 1d | 2019-05-24 19:30 | 2019-05-24 23:30 |  | 40% | 0.6d | 2019-05-27 09:00 |  | 84h | 42h | 672,000 | 336,000 |
| 56 | 4.2.1 | 2.2.2.1 Creación de roles | manual | 13.12d | 2019-05-27 09:00 A | 2019-06-10 21:30 | 43, 81 | 40% | 7.88d |  | Victoria Fernandez Rojas | 42h | 21h | 336,000 | 168,000 |
| 57 | 4.2.2 | 2.2.2.2 Creación de perfiles | manual | 13.12d | 2019-05-27 09:00 A | 2019-06-10 21:30 |  | 40% | 7.88d |  | Victoria Fernandez Rojas | 42h | 21h | 336,000 | 168,000 |
| 58 | 4.3 | **2.2.3 Diseño de modelos** |  | 8d | 2019-05-24 19:30 | 2019-06-04 23:30 |  | 19% | 6.44d | 2019-05-23 09:00 |  | 141h | 40.08h | 1,120,000 | 320,600 |
| 59 | 4.3.1 | 2.2.3.1 Modelo entidad relación | manual | 16.38d | 2019-05-24 09:00 A | 2019-06-10 11:00 |  | 54% | 7.58d |  | Laura Péndola Gambetta | 44h | 35.2h | 352,000 | 281,600 |
| 60 | 4.3.2 | 2.2.3.2 Casos de uso (Alto nivel y diagramas) | manual | 19.88d | 2019-05-23 09:00 A | 2019-06-11 17:00 | 59 | 6% | 18.66d |  | Juan Pablo Marín Valbuena | 52h | 4.88h | 416,000 | 39,000 |
| 61 | 4.3.3 | 2.2.3.3 BPMN | manual | 11d | 2019-05-27 19:30 | 2019-06-10 23:30 | 60 |  |  |  | Victoria Fernandez Rojas | 44h |  | 352,000 |  |
| 62 | 4.3.4 | 2.2.3.4 Revisión calidad docente (2) | manual | 2.88d | 2019-06-05 09:00 | 2019-06-05 20:30 |  |  |  |  |  | 1h |  |  |  |
| 63 | 4.3.5 | 2.2.3.5 Correciones según revisión | manual | 4d | 2019-06-06 19:30 | 2019-06-11 23:30 |  |  |  |  |  |  |  |  |  |
| 64 | 5 | **2.3 Diseño Base de datos** |  | 2d | 2019-05-24 19:30 | 2019-05-27 23:30 |  | 51% | 0.98d | 2019-05-24 09:00 |  | 136h | 102.4h | 1,088,000 | 819,200 |
| 65 | 5.1 | **2.3.1 Modelamiento de Base de Datos** |  | 8h | 2019-05-24 19:30 | 2019-05-27 23:30 |  | 51% | 3.92h | 2019-05-24 09:00 |  | 136h | 102.4h | 1,088,000 | 819,200 |
| 66 | 5.1.1 | 2.3.1.1 Modelo logico de Base de Datos | manual | 65.5h | 2019-05-24 09:00 A | 2019-06-10 11:00 | 61 | 54% | 30.3h |  | Victoria Fernandez Rojas | 44h | 35.2h | 352,000 | 281,600 |
| 67 | 5.1.2 | 2.3.1.2 Modelo conceptual | manual | 65.5h | 2019-05-24 09:00 A | 2019-06-10 11:00 | 66 | 54% | 30.3h |  | Laura Péndola Gambetta | 44h | 35.2h | 352,000 | 281,600 |
| 68 | 5.1.3 | 2.3.1.3 Modelo físico | manual | 61.5h | 2019-05-27 09:00 A | 2019-06-10 11:00 | 67 | 52% | 29.5h |  | Juan Pablo Marín Valbuena | 40h | 32h | 320,000 | 256,000 |
| 69 | 5.1.4 | 2.3.1.4 Revisión de modelos | manual | 18.5h | 2019-06-07 09:00 | 2019-06-10 23:30 | 59 |  |  |  | Laura Péndola Gambetta | 8h |  | 64,000 |  |
| 70 | 6 | **3.1 Desarrollo Software** |  | 27.62d? | 2019-05-27 09:00 | 2019-06-28 23:30 |  | 27% | 20.24d? | 2019-05-20 19:30 |  | 482.8h | 150.5h | 3,862,400 | 1,204,000 |
| 71 | 6.1 | **3.1.1 Desarrollo Infraestructura** |  | 1d | 2019-05-20 19:30 | 2019-05-20 23:30 |  |  |  |  |  | 24h |  | 192,000 |  |
| 72 | 6.1.1 | **3.1.1.1 Servidor** |  | 1d | 2019-05-20 19:30 | 2019-05-20 23:30 |  |  |  |  |  | 24h |  | 192,000 |  |
| 73 | 6.1.1.1 | 3.1.1.1.1 Configuración del servidor | manual | 6d | 2019-06-13 19:30 | 2019-06-20 23:30 | 37 |  |  |  | Laura Péndola Gambetta | 24h |  | 192,000 |  |
| 74 | 6.2 | **3.1.2 Desarrollo Base de Datos** |  | 1d | 2019-05-21 19:30 | 2019-05-21 23:30 |  | 80% | 0.2d | 2019-06-10 19:30 |  | 12h | 9.6h | 96,000 | 76,800 |
| 75 | 6.2.1 | **3.1.2.1 Creación de base de datos** |  | 1d | 2019-05-21 19:30 | 2019-05-21 23:30 |  | 80% | 0.2d | 2019-06-10 19:30 |  | 12h | 9.6h | 96,000 | 76,800 |
| 76 | 6.2.1.1 | 3.1.2.1.1 Implementación mediante scripts | manual | 3d | 2019-06-10 19:30 A | 2019-06-12 23:30 |  | 80% | 0.6d |  | Victoria Fernandez Rojas | 12h | 9.6h | 96,000 | 76,800 |
| 77 | 6.3 | **3.1.3 Desarrollo de interfaz** |  | 21d? | 2019-05-24 19:30 | 2019-06-21 23:30 |  | 27% | 15.38d? | 2019-05-24 09:00 |  | 446.8h | 140.9h | 3,574,400 | 1,127,200 |
| 78 | 6.3.1 | 3.1.3.1 Documentación del prototipo | manual | 21d? | 2019-05-24 19:30 | 2019-06-21 23:30 |  |  |  |  |  |  |  |  |  |
| 79 | 6.3.2 | 3.1.3.2 Desarrollo login | manual | 0.75d | 2019-05-24 09:00 A | 2019-05-24 12:00 A |  | 100% |  |  | Laura Péndola Gambetta | 3h | 3h | 24,000 | 24,000 |
| 80 | 6.3.3 | 3.1.3.3 Desarrollo de cuenta de administrativo | manual | 17.62d | 2019-05-24 09:00 A | 2019-06-11 12:00 |  | 54% | 8.03d |  | Laura Péndola Gambetta | 48h | 38.4h | 384,000 | 307,200 |
| 81 | 6.3.4 | 3.1.3.4 Desarrollo de cuenta de docente | manual | 16.62d | 2019-05-27 09:00 A | 2019-06-11 12:00 | 80 | 53% | 7.83d |  | Juan Pablo Marín Valbuena | 44h | 35.2h | 352,000 | 281,600 |
| 82 | 6.3.5 | 3.1.3.5 Desarrollo cambio de contraseña | manual | 0.75d | 2019-05-27 09:00 A | 2019-05-27 12:00 A |  | 100% |  |  | Laura Péndola Gambetta | 3h | 3h | 24,000 | 24,000 |
| 83 | 6.3.6 | 3.1.3.6 Desarrollo Selección Perfil | manual | 0.25d | 2019-05-24 19:30 A | 2019-05-24 20:30 A |  | 100% |  |  | Laura Péndola Gambetta | 1h | 1h | 8,000 | 8,000 |
| 84 | 6.3.7 | 3.1.3.7 Desarrollo de mantenedor de usuarios | manual | 19.62d | 2019-05-28 09:00 A | 2019-06-17 12:00 | 88 | 36% | 12.62d |  | Juan Pablo Marín Valbuena | 56h | 28h | 448,000 | 224,000 |
| 85 | 6.3.8 | 3.1.3.8 Revision calidad docente (2) | manual | 0.25d | 2019-06-05 19:30 | 2019-06-05 20:30 |  |  |  |  |  |  |  |  |  |
| 86 | 6.3.9 | 3.1.3.9 Correciones según revisión | manual | 4d | 2019-06-06 19:30 | 2019-06-11 23:30 |  |  |  |  | Juan Pablo Marín Valbuena; Laura Péndola Gambetta; Victoria Fernandez Rojas | 48h |  | 384,000 |  |
| 87 | 6.3.10 | 3.1.3.10 Desarrollo de mantenedor de maquinarias | manual | 3.38d | 2019-06-10 09:00 | 2019-06-10 22:30 |  |  |  |  | Laura Péndola Gambetta | 3h |  | 24,000 |  |
| 88 | 6.3.11 | 3.1.3.11 Desarrollo de mantenedor de insumos | manual | 9.75d | 2019-05-29 19:30 A | 2019-06-11 22:30 | 90 | 30% | 6.83d |  | Victoria Fernandez Rojas | 39h | 11.7h | 312,000 | 93,600 |
| 89 | 6.3.12 | 3.1.3.12 Desarrollo de mantenedor de salas | manual | 3.38d | 2019-06-10 09:00 | 2019-06-10 22:30 |  |  |  |  | Laura Péndola Gambetta | 3h |  | 24,000 |  |
| 90 | 6.3.13 | 3.1.3.13 Desarrollo de calendario | manual | 6.38d | 2019-06-17 09:00 | 2019-06-20 22:30 | 81 |  |  |  | Laura Péndola Gambetta | 15h |  | 120,000 |  |
| 91 | 6.3.14 | 3.1.3.14 Desarrollo de mantenedor de reservas | manual | 5.38d | 2019-06-06 09:00 | 2019-06-10 22:30 |  |  |  |  | Victoria Fernandez Rojas | 11h |  | 88,000 |  |
| 92 | 6.3.15 | 3.1.3.15 Desarrollo de generación de reportes | manual | 7.38d | 2019-06-17 09:00 | 2019-06-21 22:30 | 91 |  |  |  | Juan Pablo Marín Valbuena | 19h |  | 152,000 |  |

| ID | WBS | Task | Type | Duration | Start | Finish | Predecessors | Complete | Remaining | Actual start | Resources | Work | Actual work | Cost | Actual cost |
| --- | --- | --- | --- | --- | --- | --- | --- | --- | --- | --- | --- | --- | --- | --- | --- |
| 93 | 6.3.16 | **3.1.4 Testing interno** |  | 12d | 2019-06-03 19:30 | 2019-06-18 23:30 |  | 21% | 9.46d | 2019-06-03 09:00 |  | 105.8h | 20.6h | 846,400 | 164,800 |
| 94 | 6.3.16.1 | 3.1.4.1 Acceso | manual | 0.15d | 2019-06-03 09:00 A | 2019-06-03 09:36 A | 68 | 100% |  |  | Laura Péndola Gambetta | 0.6h | 0.6h | 4,800 | 4,800 |
| 95 | 6.3.16.2 | 3.1.4.2 Reservas | manual | 3.77d | 2019-06-10 09:00 | 2019-06-11 20:06 | 68 |  |  |  | Juan Pablo Marín Valbuena | 4.6h |  | 36,800 |  |
| 96 | 6.3.16.3 | 3.1.4.3 Reportes | manual | 2.77d | 2019-06-21 09:00 | 2019-06-21 20:06 | 68 |  |  |  | Victoria Fernandez Rojas | 0.6h |  | 4,800 |  |
| 97 | 6.3.16.4 | 3.1.4.4 Mantenedores (Usuarios, salas, maquinarias, insumos) | manual | 15.62d | 2019-06-03 09:00 A | 2019-06-17 12:00 | 68 | 32% | 10.62d |  | Victoria Fernandez Rojas | 40h | 20h | 320,000 | 160,000 |
| 98 | 6.3.16.5 | 3.1.4.5 Revision calidad docente (4) | manual | 1h | 2019-06-12 19:30 | 2019-06-12 20:30 |  |  |  |  |  |  |  |  |  |
| 99 | 6.3.16.6 | 3.1.4.6 Correcciones según revisión | manual | 4d | 2019-06-13 19:30 | 2019-06-18 23:30 |  |  |  |  | Juan Pablo Marín Valbuena; Laura Péndola Gambetta; Victoria Fernandez Rojas | 48h |  | 384,000 |  |
| 100 | 6.3.16.7 | 3.1.4.7 Revisión documentación del prototipo | manual | 3d | 2019-06-14 19:30 | 2019-06-18 23:30 |  |  |  |  | Juan Pablo Marín Valbuena | 12h |  | 96,000 |  |
| 101 | 6.3.17 | **3.1.5 Revisión de calidad docente (final)** |  | 1d | 2019-06-19 19:30 | 2019-06-19 23:30 |  |  |  |  |  | 48h |  | 384,000 |  |
| 102 | 6.3.17.1 | 3.1.5.1 Correcciones según revisón (previo pre-producción) | manual | 4d | 2019-06-20 19:30 | 2019-06-25 23:30 |  |  |  |  | Juan Pablo Marín Valbuena; Laura Péndola Gambetta; Victoria Fernandez Rojas | 48h |  | 384,000 |  |
| 103 | 7 | **4.1 Pre-producción** |  | 11d | 2019-06-25 19:30 | 2019-07-09 23:30 |  |  |  |  |  | 80h |  | 640,000 |  |
| 104 | 7.1 | **4.1.1 Revisión y preparación pre-migración de información** |  | 7d | 2019-06-25 19:30 | 2019-07-03 23:30 |  |  |  |  |  | 56h |  | 448,000 |  |
| 105 | 7.1.1 | 4.1.1.1 Auto-testing | manual | 7d | 2019-06-25 19:30 | 2019-07-03 23:30 | 73 |  |  |  | Juan Pablo Marín Valbuena; Laura Péndola Gambetta | 56h |  | 448,000 |  |
| 106 | 7.2 | **4.1.2 Migración de información** |  | 6d | 2019-07-02 19:30 | 2019-07-09 23:30 |  |  |  |  |  | 24h |  | 192,000 |  |
| 107 | 7.2.1 | 4.1.2.1 Cargar información | manual | 6d | 2019-07-02 19:30 | 2019-07-09 23:30 | 105 |  |  |  | Victoria Fernandez Rojas | 24h |  | 192,000 |  |
